# Cronograma

Schedule from MS Project, 2018-05-28 to 2018-07-06, costs in $, A marks actual dates.

## Calendars

- Standard: Mon-Fri 08:00-12:00, 13:00-17:00; Sat-Sun off.

## Resources

| Resource | Rate | Cost per use |
| --- | --- | --- |
| Eduardo Faggiani | 15 | 15 |
| Gabriel Oraboni Carvalho | 15 | 15 |
| Renam Makoto Aono | 15 | 15 |
| Vinícius de Oliveira Souza | 15 | 15 |
| Ana Caroline Costa Passos | 15 | 15 |
| Cliente |  |  |

## Schedule

| ID | WBS | Task | Duration | Start | Finish | Predecessors | Complete | Remaining | Total slack | Resources | Work | Actual work | Cost | Baseline cost | Actual cost |
| --- | --- | --- | --- | --- | --- | --- | --- | --- | --- | --- | --- | --- | --- | --- | --- |
| 1 | 1 | **SuperMaps** | 29.12d | 2018-05-28 A | 2018-07-06 |  | 42% | 16.82d | 0d |  | 472h | 158h | 7,605 | 7,605 | 2,565 |
| 2 | 1.1 | **Prospecção** | 1.5d | 2018-05-28 A | 2018-05-29 A |  | 100% |  |  |  | 12h | 12h | 210 | 210 | 210 |
| 3 | 1.1.1 | Reunião com o Cliente | 6h | 2018-05-28 A | 2018-05-28 A |  | 100% |  |  | Eduardo Faggiani | 6h | 6h | 105 | 105 | 105 |
| 4 | 1.1.2 | Redigir Ata de Reunião | 6h | 2018-05-28 A | 2018-05-29 A | 3 | 100% |  |  | Ana Caroline Costa Passos | 6h | 6h | 105 | 105 | 105 |
| 5 | 1.2 | **Análise** | 5.5d | 2018-05-29 A | 2018-06-05 A | 4 | 100% |  |  |  | 58h | 58h | 900 | 900 | 900 |
| 6 | 1.2.1 | Redigir Documento de Requisitos | 13h | 2018-05-29 A | 2018-05-31 A | 4 | 100% |  |  | Renam Makoto Aono | 13h | 13h | 210 | 210 | 210 |
| 7 | 1.2.2 | Revisar Documento de Requisitos | 15h | 2018-05-31 A | 2018-06-01 A | 6 | 100% |  |  | Gabriel Oraboni Carvalho | 15h | 15h | 240 | 240 | 240 |
| 8 | 1.2.3 | Aprovação do Cliente | 5h | 2018-06-04 A | 2018-06-04 A | 7 | 100% |  |  | Cliente | 5h | 5h |  |  |  |
| 9 | 1.2.4 | **Projeto** | 1.38d | 2018-06-04 A | 2018-06-05 A | 8 | 100% |  |  |  | 25h | 25h | 450 | 450 | 450 |
| 10 | 1.2.4.1 | **Diagrama de Classes** | 0.88d | 2018-06-04 A | 2018-06-05 A | 8 | 100% |  |  |  | 9h | 9h | 180 | 180 | 180 |
| 11 | 1.2.4.1.1 | Elaborar Diagrama de Classes | 5h | 2018-06-04 A | 2018-06-05 A | 8 | 100% |  |  | Renam Makoto Aono | 5h | 5h | 90 | 90 | 90 |
| 12 | 1.2.4.1.2 | Revisar Diagrama de Classes | 2h | 2018-06-05 A | 2018-06-05 A | 11 | 100% |  |  | Gabriel Oraboni Carvalho | 2h | 2h | 45 | 45 | 45 |
| 13 | 1.2.4.1.3 | Redigir MRB | 2h | 2018-06-04 A | 2018-06-04 A | 8 | 100% |  |  | Ana Caroline Costa Passos | 2h | 2h | 45 | 45 | 45 |
| 14 | 1.2.4.2 | **Modelo entidade relacionamento** | 1.38d | 2018-06-04 A | 2018-06-05 A |  | 100% |  |  |  | 16h | 16h | 270 | 270 | 270 |
| 15 | 1.2.4.2.1 | Elaborar MER | 11h | 2018-06-04 A | 2018-06-05 A | 8 | 100% |  |  | Vinícius de Oliveira Souza | 11h | 11h | 180 | 180 | 180 |
| 16 | 1.2.4.2.2 | Revisar MER | 5h | 2018-06-04 A | 2018-06-05 A | 8 | 100% |  |  | Renam Makoto Aono | 5h | 5h | 90 | 90 | 90 |
| 17 | 1.3 | **Planejamento** | 2.25d | 2018-06-04 A | 2018-06-06 A | 8 | 100% |  |  |  | 26h | 26h | 435 | 435 | 435 |
| 18 | 1.3.1 | Reunir com a Equipe | 1d | 2018-06-04 A | 2018-06-05 A | 8 | 100% |  |  | Gabriel Oraboni Carvalho | 8h | 8h | 135 | 135 | 135 |
| 19 | 1.3.2 | Redigir Plano de Projeto | 10h | 2018-06-04 A | 2018-06-05 A | 8 | 100% |  |  | Eduardo Faggiani | 10h | 10h | 165 | 165 | 165 |
| 20 | 1.3.3 | Redigir EAP | 1d | 2018-06-05 A | 2018-06-06 A | 19 | 100% |  |  | Ana Caroline Costa Passos | 8h | 8h | 135 | 135 | 135 |
| 21 | 1.4 | **Monitoramento e Controle** | 0.75d | 2018-06-06 A | 2018-06-07 A | 20 | 100% |  |  |  | 6h | 6h | 105 | 105 | 105 |
| 22 | 1.4.1 | Definir Processo de Monitoramento e Controle do Projeto | 6h | 2018-06-06 A | 2018-06-07 A | 20 | 100% |  |  | Renam Makoto Aono | 6h | 6h | 105 | 105 | 105 |
| 23 | 1.5 | **Controle de Mudanças** | 1.12d | 2018-06-07 A | 2018-06-08 A | 22 | 100% |  |  |  | 9h | 9h | 150 | 150 | 150 |
| 24 | 1.5.1 | Definir Processo de Mudanças do Projeto | 9h | 2018-06-07 A | 2018-06-08 A | 22 | 100% |  |  | Gabriel Oraboni Carvalho | 9h | 9h | 150 | 150 | 150 |

| ID | WBS | Task | Duration | Start | Finish | Predecessors | Complete | Remaining | Total slack | Resources | Work | Actual work | Cost | Baseline cost | Actual cost |
| --- | --- | --- | --- | --- | --- | --- | --- | --- | --- | --- | --- | --- | --- | --- | --- |
| 25 | 1.6 | **Desenvolvimento** | 18.88d | 2018-06-06 A | 2018-07-03 | 20 | 19% | 15.24d | 2.38d |  | 342h | 47h | 5,505 | 5,505 | 765 |
| 26 | 1.6.1 | **Release 1** | 4.62d | 2018-06-06 A | 2018-06-13 | 20 | 70% | 1.38d | 0d |  | 67h | 47h | 1,080 | 1,080 | 765 |
| 27 | 1.6.1.1 | Implementar [RF01] Importar Banco de Dados do Supermercado | 20h | 2018-06-06 | 2018-06-11 | 20 |  |  | 2.12d | Ana Caroline Costa Passos | 20h |  | 315 | 315 |  |
| 28 | 1.6.1.2 | Implementar [RF02] Cadastrar Mapa | 27h | 2018-06-06 A | 2018-06-12 A | 20 | 100% |  |  | Eduardo Faggiani | 27h | 27h | 420 | 420 | 420 |
| 29 | 1.6.1.3 | Implementar [RF03] Editar Mapa | 10h | 2018-06-12 A | 2018-06-13 A | 28 | 100% |  |  | Ana Caroline Costa Passos | 10h | 10h | 165 | 165 | 165 |
| 30 | 1.6.1.4 | Implementar [RF04] Remover Mapa | 5h | 2018-06-12 A | 2018-06-12 A | 28 | 100% |  |  | Vinícius de Oliveira Souza | 5h | 5h | 90 | 90 | 90 |
| 31 | 1.6.1.5 | Implementar [RF05] Consultar Mapa | 5h | 2018-06-12 A | 2018-06-12 A | 28 | 100% |  |  | Gabriel Oraboni Carvalho | 5h | 5h | 90 | 90 | 90 |
| 32 | 1.6.2 | **Release 2** | 4.75d | 2018-06-13 | 2018-06-20 | 26 |  |  | 0d |  | 70h |  | 1,140 | 1,140 |  |
| 33 | 1.6.2.1 | Implementar [RF06] Cadastrar Prateleira | 23h | 2018-06-13 | 2018-06-18 | 28 |  |  | 0d | Ana Caroline Costa Passos | 23h |  | 360 | 360 |  |
| 34 | 1.6.2.2 | Implementar [RF07] Editar Prateleira | 8h | 2018-06-18 | 2018-06-19 | 33 |  |  | 0.88d | Vinícius de Oliveira Souza | 8h |  | 135 | 135 |  |
| 35 | 1.6.2.3 | Implementar [RF08] Consultar Prateleira | 9h | 2018-06-18 | 2018-06-19 | 33 |  |  | 0.75d | Renam Makoto Aono | 9h |  | 150 | 150 |  |
| 36 | 1.6.2.4 | Implementar [RF09] Remover Prateleira | 5h | 2018-06-18 | 2018-06-18 | 33 |  |  | 1.25d | Eduardo Faggiani | 5h |  | 90 | 90 |  |
| 37 | 1.6.2.5 | Implementar [RF10] Inserir Prateleira no Mapa | 15h | 2018-06-18 | 2018-06-20 | 33 |  |  | 0d | Gabriel Oraboni Carvalho | 15h |  | 240 | 240 |  |
| 38 | 1.6.2.6 | Implementar [RF11] Inserir Produtos na Prateleira | 10h | 2018-06-18 | 2018-06-19 | 33 |  |  | 0.62d | Ana Caroline Costa Passos | 10h |  | 165 | 165 |  |
| 39 | 1.6.3 | **Release 3** | 4.75d | 2018-06-20 | 2018-06-26 | 32 |  |  | 0d |  | 99h |  | 1,605 | 1,605 |  |
| 40 | 1.6.3.1 | Implementar [RF12] Remover Produto na Prateleira | 1d | 2018-06-20 | 2018-06-21 | 38 |  |  | 0d | Ana Caroline Costa Passos | 8h |  | 135 | 135 |  |
| 41 | 1.6.3.2 | Implementar [RF13] Atualizar Produto na Prateleira | 1d | 2018-06-20 | 2018-06-21 | 38 |  |  | 0d | Vinícius de Oliveira Souza | 8h |  | 135 | 135 |  |
| 42 | 1.6.3.3 | Implementar [RF14] Consultar Produto | 1d | 2018-06-20 | 2018-06-21 | 38 |  |  | 0d | Renam Makoto Aono | 8h |  | 135 | 135 |  |
| 43 | 1.6.3.4 | Implementar [RF15] Localizar Produto no Supermercado | 15h | 2018-06-21 | 2018-06-25 | 38, 40, 41, 42 |  |  | 0d | Eduardo Faggiani; Vinícius de Oliveira Souza | 30h |  | 480 | 480 |  |
| 44 | 1.6.3.5 | Implementar [RF16] Calcular menor caminho para compras | 15h | 2018-06-25 | 2018-06-26 | 43 |  |  | 0d | Gabriel Oraboni Carvalho; Ana Caroline Costa Passos; Eduardo Faggiani | 45h |  | 720 | 720 |  |
| 45 | 1.6.4 | **Release 4** | 4.75d | 2018-06-27 | 2018-07-03 | 44 |  |  | 0d |  | 106h |  | 1,680 | 1,680 |  |
| 46 | 1.6.4.1 | Implementar [RF17] Emissão do menor caminho | 15h | 2018-06-27 | 2018-06-28 | 44 |  |  | 0d | Eduardo Faggiani; Vinícius de Oliveira Souza | 30h |  | 480 | 480 |  |
| 47 | 1.6.4.2 | Implementar [RF18] Ranking de Produtos | 15h | 2018-06-27 | 2018-06-28 | 43 |  |  | 5.25d | Renam Makoto Aono; Ana Caroline Costa Passos | 30h |  | 480 | 480 |  |
| 48 | 1.6.4.3 | Implementar [RF19] Relatório de itens mais visitados no supermercado | 23h | 2018-06-28 | 2018-07-03 | 46 |  |  | 0d | Gabriel Oraboni Carvalho; Eduardo Faggiani | 46h |  | 720 | 720 |  |

| ID | WBS | Task | Duration | Start | Finish | Predecessors | Total slack | Resources | Work | Cost | Baseline cost |
| --- | --- | --- | --- | --- | --- | --- | --- | --- | --- | --- | --- |
| 49 | 1.7 | **Fechamento** | 2.38d | 2018-07-03 | 2018-07-06 | 48 | 0d |  | 19h | 300 | 300 |
| 50 | 1.7.1 | Documento de Aprovação do Cliente | 19h | 2018-07-03 | 2018-07-06 | 48 | 0d | Ana Caroline Costa Passos | 19h | 300 | 300 |
